# Gantt AY Contingencia

Schedule from MS Project, 2015-04-12 to 2015-11-22, status date 2015-06-07, 24 hours a day, A marks actual dates.

## Calendars

- AsociateYa: Mon-Fri 09:00-13:00, 15:00-19:00; Sat-Sun off.
- AsociateYaContingencia: Mon-Fri 09:00-13:00, 15:00-19:00; Sat-Sun off.

## Resources

| Resource | Group |
| --- | --- |
| Croci-ANALISTA FUNCIONAL | ANALISTA FUNCIONAL |
| Budic-PROJECT MANAGER | PROJECT MANAGER |
| Tiberti-ADMINISTRADOR DE BASE DE DATOS | ADMINISTRADOR DE BASE DE DATOS |
| Tiberti-DESAROLLADOR | DESAROLLADOR |
| Budic-TESTER | TESTER |
| Croci-DISEÑADOR DE EXPERIENCIA DE USUARIO | DISEÑADOR DE EXPERIENCIA DE USUARIO |
| Rodriguez-ARQUITECTO DE SOFTWARE | ARQUITECTO DE SOFTWARE |
| Tiberti-ADMINISTRADOR DEL ENTORNO DE DESARROLLO | ADMINISTRADOR DEL ENTORNO DE DESARROLLO |
| Croci-DESAROLLADOR | DESAROLLADOR |
| Budic-DESAROLLADOR | DESAROLLADOR |
| Rodriguez-DESAROLLADOR | DESAROLLADOR |
| Budic-ANALISTA FUNCIONAL | ANALISTA FUNCIONAL |
| Rodriguez-PROJECT CONTROLLER | PROJECT CONTROLLER |

## Schedule

| ID | WBS | Task | Duration | Start | Finish | Predecessors | Complete | Remaining | Total slack | Calendar | Resources | Work | Actual work |
| --- | --- | --- | --- | --- | --- | --- | --- | --- | --- | --- | --- | --- | --- |
| 1 | 1 | **Análisis** | 2.5d | 2015-04-12 A | 2015-05-17 A |  | 100% |  |  |  |  | 124h | 124h |
| 2 | 1.1 | **Riesgos** | 0.42d | 2015-04-12 A | 2015-04-18 A |  | 100% |  |  |  |  | 39h | 39h |
| 3 | 1.1.1 | Identificar los riegos | 2h | 2015-04-12 A | 2015-04-12 A |  | 100% |  |  |  | Budic-PROJECT MANAGER; Tiberti-ADMINISTRADOR DE BASE DE DATOS; Rodriguez-ARQUITECTO DE SOFTWARE; Rodriguez-PROJECT CONTROLLER; Budic-ANALISTA FUNCIONAL; Croci-DESAROLLADOR | 11h | 11h |
| 4 | 1.1.2 | Analizar los riegos | 3h | 2015-04-12 A | 2015-04-12 A | 3 | 100% |  |  |  | Budic-PROJECT MANAGER; Tiberti-ADMINISTRADOR DE BASE DE DATOS; Rodriguez-ARQUITECTO DE SOFTWARE; Rodriguez-PROJECT CONTROLLER; Budic-ANALISTA FUNCIONAL; Croci-DESAROLLADOR | 12h | 12h |
| 5 | 1.1.3 | Planificación de riesgos | 6h | 2015-04-12 A | 2015-04-18 A | 4 | 100% |  |  |  | Budic-PROJECT MANAGER; Rodriguez-PROJECT CONTROLLER; Budic-ANALISTA FUNCIONAL | 14h | 14h |
| 6 | 1.1.4 | Completar tabla de riesgos | 1h | 2015-04-18 A | 2015-04-18 A | 5 | 100% |  |  |  | Budic-PROJECT MANAGER; Rodriguez-PROJECT CONTROLLER | 2h | 2h |
| 7 | 1.2 | **Planificación** | 1.5d | 2015-04-19 A | 2015-05-10 A |  | 100% |  |  |  |  | 54h | 54h |
| 8 | 1.2.1 | Identificar las tareas para cada entregable | 8h | 2015-04-19 A | 2015-04-25 A | 21 | 100% |  |  |  | Budic-PROJECT MANAGER | 8h | 8h |
| 9 | 1.2.2 | Definir las precedencias | 4h | 2015-04-25 A | 2015-04-26 A | 8 | 100% |  |  |  | Budic-PROJECT MANAGER | 4h | 4h |
| 10 | 1.2.3 | Estimar los tiempos de cada tarea | 3h | 2015-04-26 A | 2015-04-26 A | 9 | 100% |  |  |  | Budic-PROJECT MANAGER; Tiberti-ADMINISTRADOR DE BASE DE DATOS; Tiberti-ADMINISTRADOR DEL ENTORNO DE DESARROLLO; Croci-ANALISTA FUNCIONAL; Rodriguez-ARQUITECTO DE SOFTWARE; Budic-TESTER; Croci-DISEÑADOR DE EXPERIENCIA DE USUARIO | 14h | 14h |
| 11 | 1.2.4 | Calcular el camino crítico | 3h | 2015-05-10 A | 2015-05-10 A | 12 | 100% |  |  |  | Rodriguez-PROJECT CONTROLLER | 3h | 3h |
| 12 | 1.2.5 | Realizar diagrama de Gantt | 25h | 2015-04-26 A | 2015-05-03 A | 10 | 100% |  |  | AsociateYaContingencia | Rodriguez-PROJECT CONTROLLER | 25h | 25h |
| 13 | 1.3 | **Roles y Responsabilidades** | 0.21d | 2015-05-10 A | 2015-05-12 A |  | 100% |  |  |  |  | 7h | 7h |
| 14 | 1.3.1 | Identificar roles | 2h | 2015-05-10 A | 2015-05-10 A | 12 | 100% |  |  |  | Budic-PROJECT MANAGER; Croci-ANALISTA FUNCIONAL | 4h | 4h |
| 15 | 1.3.2 | Asignar responsabilidades a los roles | 3h | 2015-05-10 A | 2015-05-12 A | 14 | 100% |  |  |  | Budic-PROJECT MANAGER | 3h | 3h |
| 16 | 1.4 | **Habilidades y Competencias** | 0.25d | 2015-05-12 A | 2015-05-16 A |  | 100% |  |  |  |  | 6h | 6h |
| 17 | 1.4.1 | Asignar competencias a los roles | 6h | 2015-05-12 A | 2015-05-16 A | 15 | 100% |  |  |  | Budic-PROJECT MANAGER | 6h | 6h |
| 18 | 1.5 | **Comunicación** | 0.04d | 2015-05-16 A | 2015-05-17 A |  | 100% |  |  |  |  | 2h | 2h |
| 19 | 1.5.1 | Establecer canales de comunicación entre roles | 2h | 2015-05-16 A | 2015-05-17 A | 17 | 100% |  |  |  | Budic-PROJECT MANAGER | 2h | 2h |
| 20 | 1.6 | **WBS** | 0.21d | 2015-04-18 A | 2015-04-19 A |  | 100% |  |  |  |  | 16h | 16h |
| 21 | 1.6.1 | Definir entregables | 8h | 2015-04-18 A | 2015-04-19 A | 6 | 100% |  |  |  | Budic-PROJECT MANAGER; Croci-ANALISTA FUNCIONAL | 16h | 16h |
| 22 | 2 | **Diseño** | 4.65d | 2015-04-25 A | 2015-06-28 |  | 94% | 0.29d | 10.52d |  |  | 197h | 185.7h |
| 23 | 2.1 | **Casos de Uso** | 2.79d | 2015-05-12 A | 2015-06-21 |  | 94% | 0.17d | 11.12d |  |  | 104h | 99.2h |
| 24 | 2.1.1 | Identificar actores y funcionalidades | 25h | 2015-05-12 A | 2015-05-24 A | 21, 13 | 100% |  |  |  | Croci-ANALISTA FUNCIONAL; Budic-ANALISTA FUNCIONAL | 50h | 50h |
| 25 | 2.1.2 | Describir casos de uso | 48h | 2015-05-24 A | 2015-06-18 | 24 | 90% | 4.8h | 11.33d |  | Croci-ANALISTA FUNCIONAL; Budic-PROJECT MANAGER | 50h | 45.2h |
| 26 | 2.1.3 | Describir las relaciones entre los actores y casos de uso | 4h | 2015-06-14 A | 2015-06-21 A | 24, 25 | 100% |  |  |  | Croci-ANALISTA FUNCIONAL; Budic-ANALISTA FUNCIONAL | 4h | 4h |

| ID | WBS | Task | Duration | Start | Finish | Predecessors | Complete | Remaining | Total slack | Resources | Work | Actual work |
| --- | --- | --- | --- | --- | --- | --- | --- | --- | --- | --- | --- | --- |
| 27 | 2.2 | **DER** | 2d | 2015-05-24 A | 2015-06-21 A |  | 100% |  |  |  | 38h | 38h |
| 28 | 2.2.1 | Definir entidades y sus atributos | 8h | 2015-05-24 A | 2015-05-29 A | 24 | 100% |  |  | Tiberti-ADMINISTRADOR DE BASE DE DATOS; Croci-ANALISTA FUNCIONAL; Rodriguez-ARQUITECTO DE SOFTWARE; Budic-PROJECT MANAGER | 24h | 24h |
| 29 | 2.2.2 | Describir las relaciones entre las entidades | 8h | 2015-05-29 A | 2015-06-18 A | 28 | 100% |  |  | Tiberti-ADMINISTRADOR DE BASE DE DATOS; Croci-ANALISTA FUNCIONAL | 8h | 8h |
| 30 | 2.2.3 | Normalizar DER | 6h | 2015-06-18 A | 2015-06-21 A | 29 | 100% |  |  | Tiberti-ADMINISTRADOR DE BASE DE DATOS | 6h | 6h |
| 31 | 2.3 | **Maqueta del Front-End** | 0.33d | 2015-06-21 A | 2015-06-26 |  | 90% | 0.03d | 10.47d |  | 10h | 9h |
| 32 | 2.3.1 | Diseñar disposición de elementos estéticamente | 10h | 2015-06-21 A | 2015-06-26 | 30 | 90% | 1h | 10.47d | Croci-DISEÑADOR DE EXPERIENCIA DE USUARIO | 10h | 9h |
| 33 | 2.4 | **Documento De Arquitectura** | 0.21d | 2015-04-25 A | 2015-04-27 A |  | 100% |  |  |  | 8h | 8h |
| 34 | 2.4.1 | Definir arquitectura de software | 8h | 2015-04-25 A | 2015-04-27 A | 8 | 100% |  |  | Rodriguez-ARQUITECTO DE SOFTWARE | 8h | 8h |
| 35 | 2.5 | **Especificación de la BD** | 0.6d | 2015-06-21 A | 2015-06-28 |  | 85% | 0.09d | 10.2d |  | 37h | 31.5h |
| 36 | 2.5.1 | Diseño de tablas de la BD | 6h | 2015-06-21 A | 2015-06-23 A | 30, 26 | 100% |  |  | Tiberti-ADMINISTRADOR DE BASE DE DATOS; Croci-ANALISTA FUNCIONAL; Rodriguez-ARQUITECTO DE SOFTWARE | 18h | 18h |
| 37 | 2.5.2 | Definir tipo y volumen de datos | 3h | 2015-06-26 A | 2015-06-27 A | 38 | 100% |  |  | Tiberti-ADMINISTRADOR DE BASE DE DATOS | 3h | 3h |
| 38 | 2.5.3 | Relaciones entre las tablas de la BD | 3h | 2015-06-23 A | 2015-06-26 A | 36 | 100% |  |  | Tiberti-ADMINISTRADOR DE BASE DE DATOS | 3h | 3h |
| 39 | 2.5.4 | Definir políticas de seguridad e integridad | 5h | 2015-06-27 A | 2015-06-28 | 37 | 50% | 2.5h | 10.2d | Tiberti-ADMINISTRADOR DE BASE DE DATOS; Croci-ANALISTA FUNCIONAL; Rodriguez-ARQUITECTO DE SOFTWARE | 13h | 7.5h |
| 40 | 3 | **Desarrollo** | 15.31d? | 2015-04-12 A | 2015-11-12 |  | 62% | 5.84d? | 0.81d |  | 1346h | 838.25h |
| 41 | 3.1 | **Capacitacion** | 4.96d? | 2015-04-27 A | 2015-07-05 A |  | 100% |  |  |  | 355h | 355h |
| 42 | 3.1.1 | Inicio Capacitación en HTML | 15h | 2015-04-27 A | 2015-05-04 A | 34 | 100% |  |  | Tiberti-DESAROLLADOR | 15h | 15h |
| 43 | 3.1.2 | Inicio Capacitación en Java | 20h | 2015-04-27 A | 2015-05-11 A | 34 | 100% |  |  | Croci-DESAROLLADOR | 20h | 20h |
| 44 | 3.1.3 | Inicio Capacitación en CSS | 20h | 2015-04-27 A | 2015-05-11 A | 34 | 100% |  |  | Budic-DESAROLLADOR | 20h | 20h |
| 45 | 3.1.4 | Inicio Capacitación en PHP | 20h | 2015-04-27 A | 2015-05-11 A | 34 | 100% |  |  | Rodriguez-DESAROLLADOR | 20h | 20h |
| 46 | 3.1.5 | Capacitación en HTML | 30h | 2015-05-09 A | 2015-05-31 A | 42 | 100% |  |  | Tiberti-DESAROLLADOR | 30h | 30h |
| 47 | 3.1.6 | Capacitación en Java | 10h | 2015-05-11 A | 2015-05-17 A | 43 | 100% |  |  | Croci-DESAROLLADOR | 10h | 10h |
| 48 | 3.1.7 | Capacitación en CSS | 50h | 2015-05-09 A | 2015-07-05 A | 44 | 100% |  |  | Budic-DESAROLLADOR | 50h | 50h |
| 49 | 3.1.8 | Capacitación en PHP | 70h | 2015-05-11 A | 2015-06-14 A | 45 | 100% |  |  | Rodriguez-DESAROLLADOR | 70h | 70h |
| 50 | 3.1.9 | Capacitacion Symfony | 53.02h? | 2015-05-11 A | 2015-06-20 A | 42, 43, 44, 45 | 100% |  |  | Budic-DESAROLLADOR; Croci-DESAROLLADOR; Rodriguez-DESAROLLADOR; Tiberti-DESAROLLADOR | 120h | 120h |

| ID | WBS | Task | Type | Duration | Start | Finish | Predecessors | Complete | Remaining | Total slack | Free slack | Calendar | Resources | Work | Actual work |
| --- | --- | --- | --- | --- | --- | --- | --- | --- | --- | --- | --- | --- | --- | --- | --- |
| 51 | 3.2 | **Escribir código de Plantillas** |  | 10.29d? | 2015-05-11 A | 2015-10-03 |  | 65% | 3.6d? | 2.54d |  |  |  | 200h | 130h |
| 52 | 3.2.1 | Inscribirse al portal |  | 15h? | 2015-05-11 A | 2015-06-21 A | 42, 44 | 100% |  |  |  |  | Budic-DESAROLLADOR | 15h | 15h |
| 53 | 3.2.2 | Autenticarse como usuario |  | 15h? | 2015-05-17 A | 2015-06-27 A | 52 | 100% |  |  |  |  | Budic-DESAROLLADOR | 15h | 15h |
| 54 | 3.2.3 | Modificar Usuario |  | 10h? | 2015-06-01 A | 2015-06-07 A | 53 | 100% |  |  |  |  | Budic-DESAROLLADOR | 10h | 10h |
| 55 | 3.2.4 | Dar de baja Usuario |  | 10h? | 2015-06-07 A | 2015-06-13 A | 54 | 100% |  |  |  |  | Budic-DESAROLLADOR | 10h | 10h |
| 56 | 3.2.5 | Inscribirse como emprendedor |  | 15h? | 2015-07-11 A | 2015-07-19 A | 136 | 100% |  |  |  |  | Budic-DESAROLLADOR | 15h | 15h |
| 57 | 3.2.6 | Aprobar inscripción como emprendedor |  | 10h? | 2015-07-15 A | 2015-07-19 A | 56 | 100% |  |  |  |  | Budic-DESAROLLADOR | 10h | 10h |
| 58 | 3.2.7 | Aplicar para crear emprendimiento |  | 10h? | 2015-07-21 A | 2015-07-26 A | 57 | 100% |  |  |  |  | Budic-DESAROLLADOR | 10h | 10h |
| 59 | 3.2.8 | Aprobar emprendimiento |  | 15h? | 2015-08-01 A | 2015-08-08 | 58 | 67% | 5h? | 13.81d |  | AsociateYaContingencia | Budic-DESAROLLADOR | 15h | 10h |
| 60 | 3.2.9 | Modificar emprendimiento |  | 10h? | 2015-08-04 A | 2015-08-09 A | 59 | 100% |  |  |  | AsociateYaContingencia | Budic-DESAROLLADOR | 10h | 10h |
| 61 | 3.2.10 | Dar de baja emprendimiento |  | 10h? | 2015-08-09 A | 2015-08-15 A | 60 | 100% |  |  |  | AsociateYaContingencia | Budic-DESAROLLADOR | 10h | 10h |
| 62 | 3.2.11 | Solicitar asociación a emprendimiento |  | 10h? | 2015-08-16 | 2015-08-22 | 137 |  |  | 11.1d | 0d | AsociateYaContingencia | Budic-DESAROLLADOR | 10h |  |
| 63 | 3.2.12 | Responder a inversor |  | 10h? | 2015-08-22 | 2015-08-24 | 62 |  |  | 11.1d |  | AsociateYaContingencia | Budic-DESAROLLADOR | 10h |  |
| 64 | 3.2.13 | Aceptar solicitud de asociación |  | 10h? | 2015-09-01 A | 2015-09-06 A | 63 | 100% |  |  |  | AsociateYaContingencia | Budic-DESAROLLADOR | 10h | 10h |
| 65 | 3.2.14 | Consultar información a emprendedor |  | 10h? | 2015-09-12 A | 2015-09-13 | 64 | 50% | 5h? | 5.62d | 0d | AsociateYaContingencia | Budic-DESAROLLADOR | 10h | 5h |
| 66 | 3.2.15 | Buscar/filtrar emprendimientos |  | 10h? | 2015-09-13 | 2015-09-18 | 65 |  |  | 5.62d | 0d | AsociateYaContingencia | Budic-DESAROLLADOR | 10h |  |
| 67 | 3.2.16 | Realizar Pago |  | 20h? | 2015-09-18 | 2015-09-22 | 66 |  |  | 5.62d | 0d | AsociateYaContingencia | Budic-DESAROLLADOR | 20h |  |
| 68 | 3.2.17 | Configurar seguimiento de emprendimiento |  | 10h? | 2015-09-27 | 2015-10-03 | 138 |  |  | 5.35d | 0d | AsociateYaContingencia | Budic-DESAROLLADOR | 10h |  |
| 69 | 3.2.18 | Crear Agenda | inactive | 10h? | 2015-10-03 | 2015-10-04 | 68 |  |  | 4.1d | 0d | AsociateYaContingencia | Budic-DESAROLLADOR | 10h |  |
| 70 | 3.2.19 | Modificar agenda | inactive | 10h? | 2015-10-04 | 2015-10-09 | 69 |  |  | 4.1d | 0d | AsociateYaContingencia | Budic-DESAROLLADOR | 10h |  |
| 71 | 3.2.20 | Difundir Mail | inactive | 10h? | 2015-10-09 | 2015-10-11 | 70 |  |  | 4.1d | 0d | AsociateYaContingencia | Budic-DESAROLLADOR | 10h |  |
| 72 | 3.3 | **Escribir código JavaScript** |  | 9.83d? | 2015-05-17 A | 2015-10-02 |  | 60% | 3.98d? | 2.67d |  |  |  | 205h | 122h |
| 73 | 3.3.1 | Inscribirse al portal |  | 15h? | 2015-05-17 A | 2015-05-24 | 43 | 80% | 3h? | 11.67d | 0d |  | Croci-DESAROLLADOR | 15h | 12h |
| 74 | 3.3.2 | Autenticarse como usuario |  | 15h? | 2015-05-23 A | 2015-06-08 | 73 | 67% | 5h? | 10.83d |  |  | Croci-DESAROLLADOR | 15h | 10h |
| 75 | 3.3.3 | Modificar Usuario |  | 10h? | 2015-05-27 A | 2015-05-31 A | 74 | 100% |  |  |  |  | Croci-DESAROLLADOR | 10h | 10h |
| 76 | 3.3.4 | Dar de baja Usuario |  | 10h? | 2015-05-31 A | 2015-06-06 A | 75 | 100% |  |  |  |  | Croci-DESAROLLADOR | 10h | 10h |
| 77 | 3.3.5 | Inscribirse como emprendedor |  | 15h? | 2015-06-28 A | 2015-08-02 | 141 | 67% | 5h? | 6.96d |  |  | Croci-DESAROLLADOR | 15h | 10h |
| 78 | 3.3.6 | Aprobar inscripción como emprendedor |  | 10h? | 2015-07-04 A | 2015-07-06 A | 77 | 100% |  |  |  |  | Croci-DESAROLLADOR | 10h | 10h |
| 79 | 3.3.7 | Aplicar para crear emprendimiento |  | 10h? | 2015-07-06 A | 2015-07-12 A | 78 | 100% |  |  |  |  | Croci-DESAROLLADOR | 10h | 10h |
| 80 | 3.3.8 | Aprobar emprendimiento |  | 15h? | 2015-07-12 A | 2015-08-08 | 79 | 67% | 5h? | 6.62d |  |  | Croci-DESAROLLADOR | 15h | 10h |
| 81 | 3.3.9 | Modificar emprendimiento |  | 10h? | 2015-07-19 A | 2015-07-26 A | 80 | 100% |  |  |  |  | Croci-DESAROLLADOR | 10h | 10h |
| 82 | 3.3.10 | Dar de baja emprendimiento |  | 10h? | 2015-07-26 A | 2015-08-02 A | 81 | 100% |  |  |  |  | Croci-DESAROLLADOR | 10h | 10h |
| 83 | 3.3.11 | Solicitar asociación a emprendimiento |  | 10h? | 2015-08-23 | 2015-08-26 | 142 |  |  | 10.51d | 0d | AsociateYaContingencia | Croci-DESAROLLADOR | 10h |  |
| 84 | 3.3.12 | Responder a inversor |  | 10h? | 2015-08-26 | 2015-08-29 | 83 |  |  | 10.51d |  | AsociateYaContingencia | Croci-DESAROLLADOR | 10h |  |
| 85 | 3.3.13 | Aceptar solicitud de asociación |  | 10h? | 2015-08-30 A | 2015-09-05 A | 84 | 100% |  |  |  | AsociateYaContingencia | Croci-DESAROLLADOR | 10h | 10h |
| 86 | 3.3.14 | Consultar información a emprendedor |  | 15h? | 2015-09-09 A | 2015-09-13 | 85 | 33% | 10h? | 5.81d | 0d | AsociateYaContingencia | Croci-DESAROLLADOR | 15h | 5h |
| 87 | 3.3.15 | Buscar/filtrar emprendimientos |  | 10h? | 2015-09-13 | 2015-09-19 | 86 |  |  | 5.81d | 0.04d | AsociateYaContingencia | Croci-DESAROLLADOR | 10h |  |
| 88 | 3.3.16 | Realizar Pago |  | 20h? | 2015-09-19 A | 2015-09-25 | 87 | 25% | 15h? | 5.56d | 0d | AsociateYaContingencia | Croci-DESAROLLADOR | 20h | 5h |
| 89 | 3.3.17 | Configurar seguimiento de emprendimiento |  | 10h? | 2015-09-27 | 2015-10-02 | 143 |  |  | 5.56d | 0d | AsociateYaContingencia | Croci-DESAROLLADOR | 10h |  |
| 90 | 3.3.18 | Crear Agenda | inactive | 10h? | 2015-10-02 | 2015-10-04 | 89 |  |  | 4.31d | 0d | AsociateYaContingencia | Croci-DESAROLLADOR | 10h |  |
| 91 | 3.3.19 | Modificar agenda | inactive | 10h? | 2015-10-04 | 2015-10-07 | 90 |  |  | 4.31d | 0d | AsociateYaContingencia | Croci-DESAROLLADOR | 10h |  |
| 92 | 3.3.20 | Difundir Mail | inactive | 10h? | 2015-10-07 | 2015-10-10 | 91 |  |  | 4.31d | 0d | AsociateYaContingencia | Croci-DESAROLLADOR | 10h |  |

| ID | WBS | Task | Type | Duration | Start | Finish | Predecessors | Complete | Remaining | Total slack | Free slack | Calendar | Resources | Work | Actual work |
| --- | --- | --- | --- | --- | --- | --- | --- | --- | --- | --- | --- | --- | --- | --- | --- |
| 93 | 3.4 | **Escribir código PHP** |  | 10.5d? | 2015-06-14 A | 2015-11-08 |  | 34% | 6.92d? | 0d |  |  |  | 287h | 97.85h |
| 94 | 3.4.1 | Inscribirse al portal |  | 25h? | 2015-06-14 A | 2015-07-08 | 45 | 36% | 16h? | 2.88d | 0d |  | Rodriguez-DESAROLLADOR | 25h | 9h |
| 95 | 3.4.2 | Autenticarse como usuario |  | 20h? | 2015-06-21 A | 2015-08-20 | 151 | 10% | 18h? | 0.88d | 0d |  | Rodriguez-DESAROLLADOR | 20h | 2h |
| 96 | 3.4.3 | Modificar Usuario |  | 25h? | 2015-06-28 A | 2015-08-30 | 95 | 36% | 16h? | 0.71d | 0d |  | Rodriguez-DESAROLLADOR | 25h | 9h |
| 97 | 3.4.4 | Dar de baja Usuario |  | 10h? | 2015-07-03 A | 2015-08-31 | 96 | 90% | 1h? | 0.71d | 0d |  | Rodriguez-DESAROLLADOR | 10h | 9h |
| 98 | 3.4.5 | Inscribirse como emprendedor |  | 15h? | 2015-07-05 A | 2015-09-05 | 97 | 60% | 6h? | 0.71d | 0d |  | Rodriguez-DESAROLLADOR | 15h | 9h |
| 99 | 3.4.6 | Aprobar inscripción como emprendedor |  | 15h? | 2015-07-11 A | 2015-09-07 | 98 | 60% | 6h? | 0.71d | 0d |  | Rodriguez-DESAROLLADOR | 15h | 9h |
| 100 | 3.4.7 | Aplicar para crear emprendimiento |  | 15h? | 2015-07-14 A | 2015-09-12 | 99 | 60% | 6h? | 0.71d | 0d |  | Rodriguez-DESAROLLADOR | 15h | 9h |
| 101 | 3.4.8 | Aprobar emprendimiento |  | 20h? | 2015-08-01 A | 2015-10-04 | 152 | 45% | 11h? | 0d |  | AsociateYaContingencia | Rodriguez-DESAROLLADOR | 20h | 9h |
| 102 | 3.4.9 | Modificar emprendimiento |  | 15h? | 2015-08-03 A | 2015-10-07 | 101 | 60% | 6h? | 0d |  | AsociateYaContingencia | Rodriguez-DESAROLLADOR | 15h | 9h |
| 103 | 3.4.10 | Dar de baja emprendimiento |  | 10h? | 2015-08-09 A | 2015-10-07 | 102 | 90% | 1h? | 0d |  | AsociateYaContingencia | Rodriguez-DESAROLLADOR | 10h | 9h |
| 104 | 3.4.11 | Solicitar asociación a emprendimiento |  | 15h? | 2015-10-07 | 2015-10-11 | 103 |  |  | 0d |  | AsociateYaContingencia | Rodriguez-DESAROLLADOR | 15h |  |
| 105 | 3.4.12 | Responder a inversor |  | 10h? | 2015-10-11 | 2015-10-14 | 104 |  |  | 0d |  | AsociateYaContingencia | Rodriguez-DESAROLLADOR | 10h |  |
| 106 | 3.4.13 | Aceptar solicitud de asociación |  | 14h? | 2015-08-27 A | 2015-10-17 | 105 | 64% | 5h? | 0d |  | AsociateYaContingencia | Rodriguez-DESAROLLADOR | 14h | 9h |
| 107 | 3.4.14 | Consultar información a emprendedor |  | 14h? | 2015-10-18 | 2015-10-23 | 153 |  |  | 0d |  | AsociateYaContingencia | Rodriguez-DESAROLLADOR | 14h |  |
| 108 | 3.4.15 | Buscar/filtrar emprendimientos |  | 15h? | 2015-10-23 | 2015-10-25 | 107 |  |  | 0d |  | AsociateYaContingencia | Rodriguez-DESAROLLADOR | 15h |  |
| 109 | 3.4.16 | Realizar Pago |  | 40h? | 2015-09-20 A | 2015-11-06 | 108 | 15% | 34.15h? | 0d |  | AsociateYaContingencia | Rodriguez-DESAROLLADOR | 40h | 5.85h |
| 110 | 3.4.17 | Configurar seguimiento de emprendimiento |  | 9h? | 2015-11-06 | 2015-11-08 | 109 |  |  | 0d |  | AsociateYaContingencia | Rodriguez-DESAROLLADOR | 9h |  |
| 111 | 3.4.18 | Crear Agenda | inactive | 9h? | 2015-11-12 | 2015-11-15 | 154 |  |  | -1.75d | 0d | AsociateYaContingencia | Rodriguez-DESAROLLADOR | 9h |  |
| 112 | 3.4.19 | Modificar agenda | inactive | 9h? | 2015-11-15 | 2015-11-16 | 111 |  |  | -1.75d | 0d | AsociateYaContingencia | Rodriguez-DESAROLLADOR | 9h |  |
| 113 | 3.4.20 | Difundir Mail | inactive | 9h? | 2015-11-16 | 2015-11-20 | 112 |  |  | -1.75d | 0d | AsociateYaContingencia | Rodriguez-DESAROLLADOR | 9h |  |
| 114 | 3.5 | **Escribir script de la base de datos** |  | 0.46d? | 2015-06-28 A | 2015-07-05 A |  | 100% |  |  |  |  |  | 15h | 15h |
| 115 | 3.5.1 | Script inicial |  | 12h? | 2015-06-28 A | 2015-07-05 A | 39 | 100% |  |  |  |  | Rodriguez-DESAROLLADOR; Rodriguez-ARQUITECTO DE SOFTWARE; Tiberti-ADMINISTRADOR DE BASE DE DATOS | 15h | 15h |
| 116 | 3.5.2 | Autenticarse como usuario | inactive | 9h? | 2015-07-05 | 2015-07-11 | 115 |  |  | 8.99d | 0d |  | Tiberti-DESAROLLADOR; Rodriguez-ARQUITECTO DE SOFTWARE | 11h |  |
| 117 | 3.5.3 | Modificar Usuario | inactive | 9h? | 2015-07-11 | 2015-07-15 | 116 |  |  | 8.99d | 0d |  | Tiberti-DESAROLLADOR; Rodriguez-ARQUITECTO DE SOFTWARE | 11h |  |
| 118 | 3.5.4 | Dar de baja Usuario | inactive | 9h? | 2015-07-15 | 2015-07-19 | 117 |  |  | 8.99d |  |  | Tiberti-DESAROLLADOR; Rodriguez-ARQUITECTO DE SOFTWARE | 11h |  |
| 119 | 3.5.5 | Inscribirse como emprendedor | inactive | 9h? | 2015-08-08 | 2015-08-14 | 146 |  |  | 0.29d | 0d |  | Tiberti-DESAROLLADOR; Rodriguez-ARQUITECTO DE SOFTWARE | 11h |  |
| 120 | 3.5.6 | Aprobar inscripción como emprendedor | inactive | 9h? | 2015-08-14 | 2015-08-18 | 119 |  |  | 0.29d | 0d |  | Tiberti-DESAROLLADOR; Rodriguez-ARQUITECTO DE SOFTWARE | 11h |  |
| 121 | 3.5.7 | Aplicar para crear emprendimiento | inactive | 9h? | 2015-08-18 | 2015-08-23 | 120 |  |  | 0.29d | 0d |  | Tiberti-DESAROLLADOR; Rodriguez-ARQUITECTO DE SOFTWARE | 11h |  |
| 122 | 3.5.8 | Aprobar emprendimiento | inactive | 9h? | 2015-08-23 | 2015-08-29 | 121 |  |  | 0.29d | 0d |  | Tiberti-DESAROLLADOR; Rodriguez-ARQUITECTO DE SOFTWARE | 11h |  |
| 123 | 3.5.9 | Modificar emprendimiento | inactive | 20h? | 2015-08-29 | 2015-09-13 | 122 |  |  | 0.29d | 0d |  | Tiberti-DESAROLLADOR; Rodriguez-ARQUITECTO DE SOFTWARE | 20h |  |
| 124 | 3.5.10 | Dar de baja emprendimiento | inactive | 9h? | 2015-09-13 | 2015-09-20 | 123 |  |  | 0.29d | 0d |  | Tiberti-DESAROLLADOR; Rodriguez-ARQUITECTO DE SOFTWARE | 11h |  |
| 125 | 3.5.11 | Solicitar asociación a emprendimiento | inactive | 9h? | 2015-09-20 | 2015-09-27 | 147 |  |  | 0.29d | 0d |  | Tiberti-DESAROLLADOR; Rodriguez-ARQUITECTO DE SOFTWARE | 11h |  |
| 126 | 3.5.12 | Responder a inversor | inactive | 9h? | 2015-09-27 | 2015-10-03 | 125 |  |  | 0.29d | 0d |  | Tiberti-DESAROLLADOR; Rodriguez-ARQUITECTO DE SOFTWARE | 11h |  |
| 127 | 3.5.13 | Aceptar solicitud de asociación | inactive | 9h? | 2015-10-03 | 2015-10-07 | 126 |  |  | 0.29d | 0d |  | Tiberti-DESAROLLADOR; Rodriguez-ARQUITECTO DE SOFTWARE | 11h |  |
| 128 | 3.5.14 | Consultar información a emprendedor | inactive | 9h? | 2015-10-07 | 2015-10-11 | 127 |  |  | 0.29d | 0d |  | Tiberti-DESAROLLADOR; Rodriguez-ARQUITECTO DE SOFTWARE | 11h |  |
| 129 | 3.5.15 | Buscar/filtrar emprendimientos | inactive | 9h? | 2015-10-11 | 2015-10-18 | 128 |  |  | 0.29d | 0d |  | Tiberti-DESAROLLADOR; Rodriguez-ARQUITECTO DE SOFTWARE | 11h |  |
| 130 | 3.5.16 | Pagar | inactive | 9h? | 2015-10-18 | 2015-10-24 | 129 |  |  | 0.29d | 0d |  | Tiberti-DESAROLLADOR; Rodriguez-ARQUITECTO DE SOFTWARE | 11h |  |
| 131 | 3.5.17 | Configurar seguimiento de emprendimiento | inactive | 9h? | 2015-10-25 | 2015-10-31 | 148 |  |  | 0.21d | 0d |  | Tiberti-DESAROLLADOR; Rodriguez-ARQUITECTO DE SOFTWARE | 11h |  |
| 132 | 3.5.18 | Crear Agenda | inactive | 9h? | 2015-10-31 | 2015-11-04 | 131 |  |  | 0.21d | 0d |  | Tiberti-DESAROLLADOR; Rodriguez-ARQUITECTO DE SOFTWARE | 11h |  |
| 133 | 3.5.19 | Modificar agenda | inactive | 9h? | 2015-11-04 | 2015-11-08 | 132 |  |  | 0.21d | 0d |  | Tiberti-DESAROLLADOR; Rodriguez-ARQUITECTO DE SOFTWARE | 11h |  |
| 134 | 3.5.20 | Difundir Mail | inactive | 9h? | 2015-11-08 | 2015-11-14 | 133 |  |  | 0.21d | 0d |  | Tiberti-DESAROLLADOR; Rodriguez-ARQUITECTO DE SOFTWARE | 11h |  |

| ID | WBS | Task | Type | Duration | Start | Finish | Predecessors | Complete | Remaining | Total slack | Free slack | Constraint | Calendar | Resources | Work | Actual work |
| --- | --- | --- | --- | --- | --- | --- | --- | --- | --- | --- | --- | --- | --- | --- | --- | --- |
| 135 | 3.6 | **Revisión de pares de Plantillas** |  | 12d? | 2015-04-12 A | 2015-09-27 |  | 50% | 5.95d? | 4.12d |  |  |  |  | 64h | 30.4h |
| 136 | 3.6.1 | Revision 1 |  | 16h? | 2015-06-13 A | 2015-06-21 A | 55 | 100% |  |  |  |  |  | Croci-DESAROLLADOR; Rodriguez-DESAROLLADOR | 16h | 16h |
| 137 | 3.6.2 | Revision 2 |  | 8h? | 2015-08-15 A | 2015-08-16 | 61 | 90% | 0.8h? | 5.26d | 0d |  |  | Croci-DESAROLLADOR; Rodriguez-DESAROLLADOR | 16h | 14.4h |
| 138 | 3.6.3 | Revision 3 |  | 14h? | 2015-09-22 | 2015-09-27 | 67 |  |  | 5.62d | 0d |  | AsociateYaContingencia | Croci-DESAROLLADOR; Rodriguez-DESAROLLADOR | 16h |  |
| 139 | 3.6.4 | Revision 4 |  | 8h? | 2015-04-12 | 2015-04-12 | 71 |  |  | 33.2d |  |  | AsociateYaContingencia | Croci-DESAROLLADOR; Rodriguez-DESAROLLADOR | 16h |  |
| 140 | 3.7 | **Revisión de pares de JavaScript** |  | 12.17d? | 2015-04-12 A | 2015-09-27 |  | 47% | 6.39d? | 3.6d | 0d |  |  |  | 72h | 28h |
| 141 | 3.7.1 | Revision 1 |  | 20h? | 2015-06-13 A | 2015-06-28 | 76 | 90% | 2h? | 9.21d | 0d |  |  | Tiberti-DESAROLLADOR; Budic-DESAROLLADOR | 20h | 18h |
| 142 | 3.7.2 | Revision 2 |  | 20h? | 2015-08-08 A | 2015-08-23 | 82 | 50% | 10h? | 5.08d | 0d |  |  | Tiberti-DESAROLLADOR; Budic-DESAROLLADOR | 20h | 10h |
| 143 | 3.7.3 | Revision 3 |  | 11h? | 2015-09-25 | 2015-09-27 | 88 |  |  | 5.56d | 0d |  | AsociateYaContingencia | Tiberti-DESAROLLADOR; Budic-DESAROLLADOR | 16h |  |
| 144 | 3.7.4 | Revision 4 |  | 8h? | 2015-04-12 | 2015-04-12 | 92 |  |  | 32.56d |  |  | AsociateYaContingencia | Tiberti-DESAROLLADOR; Budic-DESAROLLADOR | 16h |  |
| 145 | 3.8 | **Revisión de pares de la base de datos** |  | 1.67d? | 2015-07-16 A | 2015-08-08 |  | 33% | 1.11d? | 7.31d | 3.71d |  |  |  | 18h | 6h |
| 146 | 3.8.1 | Revision 1 |  | 18h? | 2015-07-16 A | 2015-08-08 | 115 | 33% | 11.99h? | 7.31d | 0d |  |  | Budic-DESAROLLADOR; Croci-DESAROLLADOR | 18h | 6h |
| 147 | 3.8.2 | Revision 2 | inactive | 3h? | 2015-09-20 | 2015-09-20 | 124 |  |  | 0.29d | 0d |  |  | Budic-DESAROLLADOR; Croci-DESAROLLADOR | 6h |  |
| 148 | 3.8.3 | Revision 3 | inactive | 3h? | 2015-10-24 | 2015-10-24 | 130 |  |  | 0.54d | 0d |  | AsociateYaContingencia | Budic-DESAROLLADOR; Croci-DESAROLLADOR | 6h |  |
| 149 | 3.8.4 | Revision 4 | inactive | 3h? | 2015-11-14 | 2015-11-15 | 134 |  |  | 0.52d |  |  | AsociateYaContingencia | Budic-DESAROLLADOR; Croci-DESAROLLADOR | 6h |  |
| 150 | 3.9 | **Revisión de pares de PHP** |  | 10.47d? | 2015-06-19 A | 2015-11-12 |  | 26% | 7.7d? | 0.5d |  |  |  |  | 102h | 26h |
| 151 | 3.9.1 | Revision 1 |  | 15.01h? | 2015-06-19 A | 2015-08-03 | 94 | 53% | 7h? | 1.26d | 0d |  |  | Budic-DESAROLLADOR; Croci-DESAROLLADOR | 24h | 16h |
| 152 | 3.9.2 | Revision 2 |  | 28h? | 2015-07-19 A | 2015-10-03 | 100 | 36% | 18h? | 0d |  |  |  | Budic-DESAROLLADOR; Croci-DESAROLLADOR | 28h | 10h |
| 153 | 3.9.3 | Revision 3 |  | 10h? | 2015-10-17 | 2015-10-18 | 106 |  |  | 0d |  |  | AsociateYaContingencia | Budic-DESAROLLADOR; Croci-DESAROLLADOR | 20h |  |
| 154 | 3.9.4 | Revision 4 |  | 15h? | 2015-11-08 | 2015-11-12 | 110 |  |  | 1.04d | 0d |  | AsociateYaContingencia | Budic-DESAROLLADOR; Croci-DESAROLLADOR | 30h |  |
| 155 | 3.10 | **Promoción** |  | 0.62d | 2015-07-22 A | 2015-08-01 A |  | 100% |  |  |  |  |  |  | 28h | 28h |
| 156 | 3.10.1 | Realizar presentación comercial |  | 10h | 2015-07-26 A | 2015-08-01 A | 157 | 100% |  |  |  |  |  | Croci-ANALISTA FUNCIONAL; Croci-DISEÑADOR DE EXPERIENCIA DE USUARIO; Budic-PROJECT MANAGER | 20h | 20h |
| 157 | 3.10.2 | Realizar poster comercial |  | 8h | 2015-07-22 A | 2015-07-26 A | 31 | 100% |  |  |  | start no earlier than 2015-07-22 |  | Croci-DISEÑADOR DE EXPERIENCIA DE USUARIO | 8h | 8h |
| 158 | 4 | **Testing** |  | 10.81d | 2015-06-21 A | 2015-11-19 |  | 17% | 9.01d | 0.31d |  |  |  |  | 72h | 15.2h |
| 159 | 4.1 | Armar el plan de pruebas |  | 8h | 2015-06-28 A | 2015-07-04 | 160 | 60% | 3.2h | 10.24d |  |  |  | Croci-ANALISTA FUNCIONAL; Budic-PROJECT MANAGER | 16h | 9.6h |
| 160 | 4.2 | Definir los casos de prueba |  | 14.6h | 2015-06-21 A | 2015-06-28 | 26, 30 | 38% | 8.99h | 10.2d | 0d |  |  | Croci-ANALISTA FUNCIONAL; Budic-PROJECT MANAGER | 16h | 5.6h |
| 161 | 4.3 | Ejecutar los casos de prueba |  | 30h | 2015-11-08 | 2015-11-15 | 51, 72, 93, 114 |  |  | 0d |  |  | AsociateYaContingencia | Budic-TESTER | 30h |  |
| 162 | 4.4 | Documentar resultados de las pruebas |  | 10h | 2015-11-15 | 2015-11-19 | 161 |  |  | 0d |  |  | AsociateYaContingencia | Budic-TESTER | 10h |  |

| ID | WBS | Task | Duration | Start | Finish | Predecessors | Total slack | Free slack | Calendar | Resources | Work |
| --- | --- | --- | --- | --- | --- | --- | --- | --- | --- | --- | --- |
| 163 | 5 | **Manuales** | 0d | 2015-09-27 | 2015-09-28 |  | 3.6d |  |  |  | 6h |
| 164 | 5.1 | Redactar manual de uso y ayuda | 2h | 2015-09-27 | 2015-09-28 | 140, 145, 160 | 7.56d | 3.64d | AsociateYaContingencia | Tiberti-ADMINISTRADOR DE BASE DE DATOS; Tiberti-ADMINISTRADOR DEL ENTORNO DE DESARROLLO; Tiberti-DESAROLLADOR | 6h |
| 165 | 6 | **Finalización del Proyecto** | 0.56d | 2015-11-19 | 2015-11-22 |  | 0d |  | AsociateYaContingencia |  | 30h |
| 166 | 6.1 | Reflexionar sobre la experiencia realizada | 0.5h | 2015-11-19 | 2015-11-19 | 164, 162, 6, 12, 15, 17, 19, 21, 26, 30, 32, 34, 39, 150, 157 | 0d |  | AsociateYaContingencia | Tiberti-ADMINISTRADOR DE BASE DE DATOS; Tiberti-ADMINISTRADOR DEL ENTORNO DE DESARROLLO; Croci-ANALISTA FUNCIONAL; Rodriguez-ARQUITECTO DE SOFTWARE; Tiberti-DESAROLLADOR; Croci-DISEÑADOR DE EXPERIENCIA DE USUARIO; Budic-PROJECT MANAGER; Budic-TESTER | 4h |
| 167 | 6.2 | Analizar errores cometidos | 1h | 2015-11-19 | 2015-11-20 | 166 | 0d |  | AsociateYaContingencia | Tiberti-ADMINISTRADOR DE BASE DE DATOS; Tiberti-ADMINISTRADOR DEL ENTORNO DE DESARROLLO; Croci-ANALISTA FUNCIONAL; Rodriguez-ARQUITECTO DE SOFTWARE; Tiberti-DESAROLLADOR; Croci-DISEÑADOR DE EXPERIENCIA DE USUARIO; Budic-PROJECT MANAGER; Budic-TESTER | 8h |
| 168 | 6.3 | Documentación de cierre de proyecto | 6h | 2015-11-20 | 2015-11-21 | 167 | 0d |  | AsociateYaContingencia | Croci-ANALISTA FUNCIONAL; Budic-PROJECT MANAGER | 12h |
| 169 | 6.4 | Cerrar el proyecto | 6h | 2015-11-21 | 2015-11-22 | 168 | 0d |  | AsociateYaContingencia | Budic-PROJECT MANAGER | 6h |
